# Календарный план внедрения 1С:ERP + Управление холдингом

Schedule from MS Project, 2026-07-01 to 2028-02-22, costs in ₽.

## Calendars

- Стандартный: Mon-Fri 08:00-12:00, 13:00-17:00; Sat-Sun off.

## Resources

| Resource | Group | Rate |
| --- | --- | --- |
| Руководитель проекта | Управление | 4500 |
| Куратор | Управление |  |
| Архитектор решения | Архитектура | 4200 |
| Архитектор данных / НСИ | Архитектура | 4200 |
| Аналитик (финансы) | Анализ | 4000 |
| Аналитик (производство) | Анализ | 4000 |
| Аналитик (логистика/закупки) | Анализ | 4000 |
| Разработчик 1С (старший) | Разработка | 3800 |
| Разработчик 1С | Разработка | 3800 |
| Специалист по интеграциям | Разработка | 4000 |
| Специалист по миграции данных | Данные | 4000 |
| Тестировщик / QA | Тестирование | 3000 |
| Технический писатель | Документация | 2500 |
| Тренер / методолог обучения | Обучение | 3000 |
| Владелец бизнес-процессов (Заказчик) | Заказчик |  |
| Эксперт Заказчика (ключевой польз.) | Заказчик |  |
| Администратор системы | Эксплуатация | 2500 |

## Schedule

| ID | WBS | Task | Type | Duration | Start | Finish | Predecessors | Total slack | Free slack | Constraint | Resources | Work | Cost |
| --- | --- | --- | --- | --- | --- | --- | --- | --- | --- | --- | --- | --- | --- |
| 1 | 1 | Старт проекта | milestone | 0d | 2026-07-01 | 2026-07-01 |  | -477d | 0d | start no earlier than 2026-07-01 |  |  |  |
| 2 | 2 | **Фаза 1. Инициация и подготовка** |  | 20d | 2026-07-01 | 2026-07-28 |  | 0d |  |  |  | 172h | 630,000 |
| 3 | 2.1 | Разработка и утверждение Устава |  | 10d | 2026-07-01 | 2026-07-14 | 1 | 0d |  |  | Руководитель проекта; Куратор | 104h | 360,000 |
| 4 | 2.2 | Мобилизация команды, оргструктура |  | 5d | 2026-07-15 | 2026-07-21 | 3 | 0d |  |  | Руководитель проекта | 40h | 180,000 |
| 5 | 2.3 | Закрепление экспертов Заказчика (приказ) |  | 5d | 2026-07-22 | 2026-07-28 | 4 | 0d |  |  | Руководитель проекта; Владелец бизнес-процессов (Заказчик) | 28h | 90,000 |
| 6 | 2.4 | Веха: проект инициирован | milestone | 0d | 2026-07-28 | 2026-07-28 | 3, 4, 5 | -552d | 0d |  |  |  |  |
| 7 | 3 | **Фаза 2. Обследование** |  | 63d | 2026-07-29 | 2026-10-23 |  | 0d |  |  |  | 1400h | 4,616,000 |
| 8 | 3.1 | Сбор и анализ требований (воркшопы) |  | 25d | 2026-07-29 | 2026-09-01 | 6 | 0d |  |  | Аналитик (финансы); Аналитик (производство); Аналитик (логистика/закупки); Владелец бизнес-процессов (Заказчик); Эксперт Заказчика (ключевой польз.) | 800h | 2,400,000 |
| 9 | 3.2 | Описание процессов As-Is / To-Be |  | 20d | 2026-09-02 | 2026-09-29 | 8 | 0d |  |  | Аналитик (финансы); Аналитик (производство); Аналитик (логистика/закупки); Владелец бизнес-процессов (Заказчик) | 384h | 1,344,000 |
| 10 | 3.3 | Gap-анализ относительно типового 1С |  | 10d | 2026-09-30 | 2026-10-13 | 9 | 0d |  |  | Архитектор решения; Аналитик (финансы); Аналитик (производство) | 120h | 488,000 |
| 11 | 3.4 | Реестр требований + RTM (базовая линия) |  | 8d | 2026-10-14 | 2026-10-23 | 10 | 0d |  |  | Аналитик (финансы); Аналитик (производство); Аналитик (логистика/закупки) | 96h | 384,000 |
| 12 | 3.5 | Веха: обследование завершено | milestone | 0d | 2026-10-23 | 2026-10-23 | 9, 10, 11 | -552d | 0d |  |  |  |  |
| 13 | 4 | **Фаза 3. Проектирование** |  | 82d | 2026-10-26 | 2027-02-16 |  | 0d |  |  |  | 1460h | 5,801,600 |
| 14 | 4.1 | Концепция архитектуры решения |  | 15d | 2026-10-26 | 2026-11-13 | 12 | 0d |  |  | Архитектор решения; Архитектор данных / НСИ | 180h | 756,000 |
| 15 | 4.2 | Концепция НСИ / мастер-данных |  | 15d | 2026-11-16 | 2026-12-04 | 14 | 0d |  |  | Архитектор данных / НСИ; Владелец бизнес-процессов (Заказчик) | 156h | 504,000 |
| 16 | 4.3 | Концепция миграции данных |  | 15d | 2026-12-07 | 2026-12-25 | 15 | 0d |  |  | Специалист по миграции данных; Архитектор данных / НСИ | 180h | 732,000 |
| 17 | 4.4 | Концепция интеграции (ландшафт) |  | 12d | 2026-12-28 | 2027-01-12 | 16 | 0d |  |  | Архитектор решения; Специалист по интеграциям | 144h | 585,600 |
| 18 | 4.5 | Разработка ЧТЗ на подсистемы |  | 25d | 2026-11-16 | 2026-12-18 | 14 | 42d |  |  | Аналитик (финансы); Аналитик (производство); Аналитик (логистика/закупки); Архитектор решения | 540h | 2,172,000 |
| 19 | 4.6 | Разработка ЧТЗ на интеграции |  | 25d | 2027-01-13 | 2027-02-16 | 17 | 0d |  |  | Специалист по интеграциям; Архитектор решения | 260h | 1,052,000 |
| 20 | 4.7 | Веха: проектные решения утверждены | milestone | 0d | 2027-02-16 | 2027-02-16 | 15, 16, 18, 19 | -552d | 0d |  |  |  |  |
| 21 | 5 | **Фаза 4. Разработка и настройка** |  | 105d | 2027-02-17 | 2027-07-13 |  | 0d |  |  |  | 2472h | 9,320,000 |
| 22 | 5.1 | Настройка типового функционала (волна 1) |  | 30d | 2027-02-17 | 2027-03-30 | 20 | 0d |  |  | Разработчик 1С (старший); Разработчик 1С | 480h | 1,824,000 |
| 23 | 5.2 | Доработки конфигурации (волна 1) |  | 35d | 2027-03-31 | 2027-05-18 | 22 | 0d |  |  | Разработчик 1С (старший); Разработчик 1С | 840h | 3,192,000 |
| 24 | 5.3 | Разработка интеграций |  | 40d | 2027-05-19 | 2027-07-13 | 23 | 0d |  |  | Специалист по интеграциям; Разработчик 1С | 640h | 2,496,000 |
| 25 | 5.4 | Настройка и ведение НСИ |  | 30d | 2027-02-17 | 2027-03-30 | 20 | 235d |  |  | Архитектор данных / НСИ; Владелец бизнес-процессов (Заказчик) | 312h | 1,008,000 |
| 26 | 5.5 | Разработка сценариев миграции |  | 25d | 2027-02-17 | 2027-03-23 | 20 | 115d | 80d |  | Специалист по миграции данных | 200h | 800,000 |
| 27 | 5.6 | Веха: функционал готов к тестированию | milestone | 0d | 2027-07-13 | 2027-07-13 | 22, 23, 24 | 0d |  |  |  |  |  |

| ID | WBS | Task | Type | Duration | Start | Finish | Predecessors | Total slack | Resources | Work | Cost |
| --- | --- | --- | --- | --- | --- | --- | --- | --- | --- | --- | --- |
| 28 | 6 | **Фаза 5. Тестирование** |  | 155d | 2027-02-17 | 2027-09-21 |  | 0d |  | 1064h | 3,602,400 |
| 29 | 6.1 | Разработка ПМИ и тест-кейсов |  | 15d | 2027-02-17 | 2027-03-09 | 20 | 90d | Тестировщик / QA; Аналитик (финансы) | 156h | 504,000 |
| 30 | 6.2 | Функциональное тестирование |  | 20d | 2027-07-14 | 2027-08-10 | 27, 29 | 0d | Тестировщик / QA; Разработчик 1С (старший) | 208h | 662,400 |
| 31 | 6.3 | Интеграционное тестирование |  | 15d | 2027-08-11 | 2027-08-31 | 30 | 0d | Тестировщик / QA; Специалист по интеграциям | 180h | 600,000 |
| 32 | 6.4 | Нагрузочное тестирование |  | 10d | 2027-09-01 | 2027-09-14 | 31 | 5d | Тестировщик / QA; Администратор системы | 64h | 180,000 |
| 33 | 6.5 | Пробные миграции + сверка данных |  | 15d | 2027-07-14 | 2027-08-03 | 26, 27 | 35d | Специалист по миграции данных; Архитектор данных / НСИ; Эксперт Заказчика (ключевой польз.) | 216h | 732,000 |
| 34 | 6.6 | Исправление дефектов |  | 15d | 2027-09-01 | 2027-09-21 | 30, 31 | 0d | Разработчик 1С (старший); Разработчик 1С; Специалист по интеграциям | 240h | 924,000 |
| 35 | 6.7 | Веха: испытания пройдены | milestone | 0d | 2027-09-21 | 2027-09-21 | 32, 33, 34 | 0d |  |  |  |
| 36 | 7 | **Фаза 6. Обучение и опытная эксплуатация** |  | 115d | 2027-07-14 | 2027-12-21 |  | 0d |  | 1548h | 4,623,000 |
| 37 | 7.1 | Подготовка учебных материалов |  | 15d | 2027-07-14 | 2027-08-03 | 27 | 35d | Технический писатель; Тренер / методолог обучения | 180h | 480,000 |
| 38 | 7.2 | Обучение пользователей |  | 20d | 2027-09-22 | 2027-10-19 | 35, 37 | 0d | Тренер / методолог обучения; Эксперт Заказчика (ключевой польз.) | 240h | 480,000 |
| 39 | 7.3 | Промышленная миграция данных |  | 8d | 2027-09-22 | 2027-10-01 | 35 | 12d | Специалист по миграции данных [93.8%]; Архитектор данных / НСИ [46.9%]; Администратор системы [28.1%] | 108h | 411,000 |
| 40 | 7.4 | Опытно-промышленная эксплуатация (ОПЭ) |  | 30d | 2027-10-20 | 2027-11-30 | 38, 39 | 0d | Руководитель проекта; Разработчик 1С (старший); Разработчик 1С; Тестировщик / QA; Эксперт Заказчика (ключевой польз.); Администратор системы | 840h | 2,568,000 |
| 41 | 7.5 | Доработки по итогам ОПЭ |  | 15d | 2027-12-01 | 2027-12-21 | 40 | 0d | Разработчик 1С (старший); Разработчик 1С | 180h | 684,000 |
| 42 | 7.6 | Веха: система готова к ПЭ | milestone | 0d | 2027-12-21 | 2027-12-21 | 41 | 0d |  |  |  |
| 43 | 8 | **Фаза 7. Промышленная эксплуатация и закрытие** |  | 45d | 2027-12-22 | 2028-02-22 |  | 0d |  | 520h | 1,662,400 |
| 44 | 8.1 | Перевод в промышленную эксплуатацию |  | 5d | 2027-12-22 | 2027-12-28 | 42 | 0d | Руководитель проекта; Администратор системы | 60h | 190,000 |
| 45 | 8.2 | Стабилизация (Hypercare) |  | 20d | 2027-12-29 | 2028-01-25 | 44 | 0d | Разработчик 1С (старший); Разработчик 1С; Администратор системы; Руководитель проекта | 256h | 902,400 |
| 46 | 8.3 | Подготовка эксплуатационной документации |  | 15d | 2028-01-26 | 2028-02-15 | 45 | 0d | Технический писатель; Администратор системы | 156h | 390,000 |
| 47 | 8.4 | Извлечённые уроки, закрытие проекта |  | 5d | 2028-02-16 | 2028-02-22 | 45, 46 | 0d | Руководитель проекта; Куратор | 48h | 180,000 |
| 48 | 8.5 | Веха: проект завершён | milestone | 0d | 2028-02-22 | 2028-02-22 | 47 | 0d |  |  |  |
