# Календарный план внедрения 1С:ERP + Управление холдингом

Schedule from MS Project XML, 2025-09-01 to 2026-09-09.

## Calendars

- Стандартный: Mon-Fri 08:00-12:00, 13:00-17:00; Sat-Sun off.

## Resources

| Resource | Group |
| --- | --- |
| Руководитель проекта | Управление |
| Куратор | Управление |
| Архитектор решения | Архитектура |
| Архитектор данных / НСИ | Архитектура |
| Аналитик (финансы) | Анализ |
| Аналитик (производство) | Анализ |
| Аналитик (логистика/закупки) | Анализ |
| Разработчик 1С (старший) | Разработка |
| Разработчик 1С | Разработка |
| Специалист по интеграциям | Разработка |
| Специалист по миграции данных | Данные |
| Тестировщик / QA | Тестирование |
| Технический писатель | Документация |
| Тренер / методолог обучения | Обучение |
| Владелец бизнес-процессов (Заказчик) | Заказчик |
| Эксперт Заказчика (ключевой польз.) | Заказчик |
| Администратор системы | Эксплуатация |

## Schedule

| ID | WBS | Task | Type | Duration | Start | Finish | Predecessors | Resources |
| --- | --- | --- | --- | --- | --- | --- | --- | --- |
| 1 | 1 | Старт проекта | milestone | 0d | 2025-09-01 | 2025-09-01 |  |  |
| 2 | 2 | **Фаза 1. Инициация и подготовка** |  | 0d | 2025-09-02 | 2025-09-23 |  |  |
| 3 | 2.1 | Разработка и утверждение Устава |  | 10d | 2025-09-02 | 2025-09-15 | 1 | Руководитель проекта; Куратор [30%] |
| 4 | 2.2 | Мобилизация команды, оргструктура |  | 5d | 2025-09-02 | 2025-09-08 | 1 | Руководитель проекта |
| 5 | 2.3 | Закрепление экспертов Заказчика (приказ) |  | 5d | 2025-09-16 | 2025-09-22 | 3 | Руководитель проекта [50%]; Владелец бизнес-процессов (Заказчик) [20%] |
| 6 | 2.4 | Веха: проект инициирован | milestone | 0d | 2025-09-23 | 2025-09-23 | 3, 4, 5 |  |
| 7 | 3 | **Фаза 2. Обследование** |  | 0d | 2025-09-24 | 2025-11-12 |  |  |
| 8 | 3.1 | Сбор и анализ требований (воркшопы) |  | 25d | 2025-09-24 | 2025-10-28 | 6 | Аналитик (финансы); Аналитик (производство); Аналитик (логистика/закупки); Владелец бизнес-процессов (Заказчик) [50%]; Эксперт Заказчика (ключевой польз.) [50%] |
| 9 | 3.2 | Описание процессов As-Is / To-Be |  | 20d | 2025-09-24 | 2025-10-21 | 6 | Аналитик (финансы) [70%]; Аналитик (производство) [70%]; Аналитик (логистика/закупки) [70%]; Владелец бизнес-процессов (Заказчик) [30%] |
| 10 | 3.3 | Gap-анализ относительно типового 1С |  | 10d | 2025-10-29 | 2025-11-11 | 8 | Архитектор решения [50%]; Аналитик (финансы) [50%]; Аналитик (производство) [50%] |
| 11 | 3.4 | Реестр требований + RTM (базовая линия) |  | 8d | 2025-10-29 | 2025-11-07 | 8 | Аналитик (финансы) [50%]; Аналитик (производство) [50%]; Аналитик (логистика/закупки) [50%] |
| 12 | 3.5 | Веха: обследование завершено | milestone | 0d | 2025-11-12 | 2025-11-12 | 9, 10, 11 |  |
| 13 | 4 | **Фаза 3. Проектирование** |  | 0d | 2025-11-13 | 2026-01-08 |  |  |
| 14 | 4.1 | Концепция архитектуры решения |  | 15d | 2025-11-13 | 2025-12-03 | 12 | Архитектор решения; Архитектор данных / НСИ [50%] |
| 15 | 4.2 | Концепция НСИ / мастер-данных |  | 15d | 2025-11-13 | 2025-12-03 | 12 | Архитектор данных / НСИ; Владелец бизнес-процессов (Заказчик) [30%] |
| 16 | 4.3 | Концепция миграции данных |  | 15d | 2025-11-13 | 2025-12-03 | 12 | Специалист по миграции данных; Архитектор данных / НСИ [50%] |
| 17 | 4.4 | Концепция интеграции (ландшафт) |  | 12d | 2025-11-13 | 2025-11-28 | 12 | Архитектор решения [50%]; Специалист по интеграциям |
| 18 | 4.5 | Разработка ЧТЗ на подсистемы |  | 25d | 2025-12-04 | 2026-01-07 | 14 | Аналитик (финансы) [80%]; Аналитик (производство) [80%]; Аналитик (логистика/закупки) [80%]; Архитектор решения [30%] |
| 19 | 4.6 | Разработка ЧТЗ на интеграции |  | 25d | 2025-12-01 | 2026-01-02 | 17 | Специалист по интеграциям; Архитектор решения [30%] |
| 20 | 4.7 | Веха: проектные решения утверждены | milestone | 0d | 2026-01-08 | 2026-01-08 | 15, 16, 18, 19 |  |
| 21 | 5 | **Фаза 4. Разработка и настройка** |  | 0d | 2026-01-09 | 2026-03-06 |  |  |
| 22 | 5.1 | Настройка типового функционала (волна 1) |  | 30d | 2026-01-09 | 2026-02-19 | 20 | Разработчик 1С (старший); Разработчик 1С |
| 23 | 5.2 | Доработки конфигурации (волна 1) |  | 35d | 2026-01-09 | 2026-02-26 | 20 | Разработчик 1С (старший); Разработчик 1С [200%] |
| 24 | 5.3 | Разработка интеграций |  | 40d | 2026-01-09 | 2026-03-05 | 20 | Специалист по интеграциям; Разработчик 1С |
| 25 | 5.4 | Настройка и ведение НСИ |  | 30d | 2026-01-09 | 2026-02-19 | 20 | Архитектор данных / НСИ; Владелец бизнес-процессов (Заказчик) [30%] |
| 26 | 5.5 | Разработка сценариев миграции |  | 25d | 2026-01-09 | 2026-02-12 | 20 | Специалист по миграции данных |
| 27 | 5.6 | Веха: функционал готов к тестированию | milestone | 0d | 2026-03-06 | 2026-03-06 | 22, 23, 24 |  |

| ID | WBS | Task | Type | Duration | Start | Finish | Predecessors | Resources |
| --- | --- | --- | --- | --- | --- | --- | --- | --- |
| 28 | 6 | **Фаза 5. Тестирование** |  | 0d | 2026-01-09 | 2026-04-27 |  |  |
| 29 | 6.1 | Разработка ПМИ и тест-кейсов |  | 15d | 2026-01-09 | 2026-01-29 | 20 | Тестировщик / QA; Аналитик (финансы) [30%] |
| 30 | 6.2 | Функциональное тестирование |  | 20d | 2026-03-09 | 2026-04-03 | 27, 29 | Тестировщик / QA; Разработчик 1С (старший) [30%] |
| 31 | 6.3 | Интеграционное тестирование |  | 15d | 2026-03-09 | 2026-03-27 | 27, 29 | Тестировщик / QA; Специалист по интеграциям [50%] |
| 32 | 6.4 | Нагрузочное тестирование |  | 10d | 2026-04-06 | 2026-04-17 | 30 | Тестировщик / QA [50%]; Администратор системы [30%] |
| 33 | 6.5 | Пробные миграции + сверка данных |  | 15d | 2026-03-09 | 2026-03-27 | 26, 27 | Специалист по миграции данных; Архитектор данных / НСИ [50%]; Эксперт Заказчика (ключевой польз.) [30%] |
| 34 | 6.6 | Исправление дефектов |  | 15d | 2026-04-06 | 2026-04-24 | 30, 31 | Разработчик 1С (старший) [50%]; Разработчик 1С; Специалист по интеграциям [50%] |
| 35 | 6.7 | Веха: испытания пройдены | milestone | 0d | 2026-04-27 | 2026-04-27 | 32, 33, 34 |  |
| 36 | 7 | **Фаза 6. Обучение и опытная эксплуатация** |  | 0d | 2026-03-09 | 2026-07-28 |  |  |
| 37 | 7.1 | Подготовка учебных материалов |  | 15d | 2026-03-09 | 2026-03-27 | 27 | Технический писатель; Тренер / методолог обучения [50%] |
| 38 | 7.2 | Обучение пользователей |  | 20d | 2026-04-28 | 2026-05-25 | 35, 37 | Тренер / методолог обучения; Эксперт Заказчика (ключевой польз.) [50%] |
| 39 | 7.3 | Промышленная миграция данных |  | 7d | 2026-04-28 | 2026-05-06 | 35 | Специалист по миграции данных; Архитектор данных / НСИ [50%]; Администратор системы [30%] |
| 40 | 7.4 | Опытно-промышленная эксплуатация (ОПЭ) |  | 30d | 2026-05-26 | 2026-07-06 | 38, 39 | Руководитель проекта [50%]; Разработчик 1С (старший) [50%]; Разработчик 1С; Тестировщик / QA [50%]; Эксперт Заказчика (ключевой польз.) [50%]; Администратор системы [50%] |
| 41 | 7.5 | Доработки по итогам ОПЭ |  | 15d | 2026-07-07 | 2026-07-27 | 40 | Разработчик 1С (старший) [50%]; Разработчик 1С |
| 42 | 7.6 | Веха: система готова к ПЭ | milestone | 0d | 2026-07-28 | 2026-07-28 | 41 |  |
| 43 | 8 | **Фаза 7. Промышленная эксплуатация и закрытие** |  | 0d | 2026-07-29 | 2026-09-09 |  |  |
| 44 | 8.1 | Перевод в промышленную эксплуатацию |  | 5d | 2026-07-29 | 2026-08-04 | 42 | Руководитель проекта [50%]; Администратор системы |
| 45 | 8.2 | Стабилизация (Hypercare) |  | 20d | 2026-08-05 | 2026-09-01 | 44 | Разработчик 1С (старший) [30%]; Разработчик 1С [50%]; Администратор системы [50%]; Руководитель проекта [30%] |
| 46 | 8.3 | Подготовка эксплуатационной документации |  | 15d | 2026-07-29 | 2026-08-18 | 42 | Технический писатель; Администратор системы [30%] |
| 47 | 8.4 | Извлечённые уроки, закрытие проекта |  | 5d | 2026-09-02 | 2026-09-08 | 45, 46 | Руководитель проекта; Куратор [20%] |
| 48 | 8.5 | Веха: проект завершён | milestone | 0d | 2026-09-09 | 2026-09-09 | 47 |  |
